# MoneyCost

Schedule from MS Project, 2005-04-01 to 2005-04-26.
GE

## Calendars

- Standard: Mon-Fri 08:00-12:00, 13:00-17:00; Sat-Sun off.

## Resources

| Resource |
| --- |
| Sharad Mittal |
| Manpreet Singh |
| Nhep Hank |

## Schedule

| ID | WBS | Task | Duration | Start | Finish | Predecessors | Total slack | Constraint | Resources | Work |
| --- | --- | --- | --- | --- | --- | --- | --- | --- | --- | --- |
| 1 | 1 | **Money Cost - Build Plan** | 18d | 2005-04-01 08:00 | 2005-04-26 17:00 |  | 0d |  |  | 174h |
| 2 | 1.1 | **Money Cost WebSite** | 3d | 2005-04-01 08:00 | 2005-04-05 17:00 |  | 0d |  |  | 22h |
| 3 | 1.1.1 | Build Webpage | 1.5d | 2005-04-01 08:00 | 2005-04-04 12:00 |  | 0d | start no earlier than 2005-04-01 08:00 | Sharad Mittal | 12h |
| 4 | 1.1.2 | Build Money Cost BUSSVC | 1d | 2005-04-04 13:00 | 2005-04-05 12:00 | 3 | 0d |  | Sharad Mittal | 8h |
| 5 | 1.1.3 | Request SSO Enabling | 2h | 2005-04-01 08:00 | 2005-04-01 10:00 |  | 2.25d |  | Manpreet Singh | 2h |
| 6 | 1.1.4 | DB Code | 4h | 2005-04-05 13:00 | 2005-04-05 17:00 | 4 | 0d |  |  |  |
| 7 | 1.2 | **Money Cost Service** | 5d | 2005-04-06 08:00 | 2005-04-12 17:00 | 2 | 0d |  |  | 48h |
| 8 | 1.2.1 | Build Automation Service | 5d | 2005-04-06 08:00 | 2005-04-12 17:00 |  | 0d |  | Sharad Mittal | 40h |
| 9 | 1.2.2 | Setup Appworx Project | 4h | 2005-04-06 08:00 | 2005-04-06 12:00 |  | 4.5d |  | Manpreet Singh | 4h |
| 10 | 1.2.3 | Setup Clarify Queues | 4h | 2005-04-06 08:00 | 2005-04-06 12:00 |  | 4.5d |  | Manpreet Singh | 4h |
| 11 | 1.3 | Unit Testing (Dev) | 3d | 2005-04-13 08:00 | 2005-04-15 17:00 | 7 | 0d |  | Sharad Mittal | 24h |
| 12 | 1.4 | Tracker Request for QA | 4h | 2005-04-18 08:00 | 2005-04-18 12:00 | 11 | 0d |  | Sharad Mittal | 4h |
| 13 | 1.5 | QA Testing (QA) | 3d | 2005-04-18 13:00 | 2005-04-21 12:00 | 12 | 0d |  | Manpreet Singh | 24h |
| 14 | 1.6 | Parallel Testing with Exisitng Process | 3d | 2005-04-21 13:00 | 2005-04-26 12:00 | 13 | 0d |  | Manpreet Singh; Nhep Hank | 48h |
| 15 | 1.7 | Move to Production | 4h | 2005-04-26 13:00 | 2005-04-26 17:00 | 14 | 0d |  | Manpreet Singh | 4h |
